# Наименование объекта

Schedule from MS Project, 2023-12-04 to 2024-06-14, status date 2024-06-13, A marks actual dates.
*

## Calendars

- 24 часа: Mon-Sat 08:00-12:00, 13:00-18:00; Sun off.

## Resources

| Resource | Unit | Rate |
| --- | --- | --- |
| Бетонная смесь В25, F150, W6 | м3 | 100 |
| Бетонная смесь В7,5 | м3 |  |
| Арматура ф8 А240 | т |  |
| Арматура ф10 А500С | т |  |
| Арматура ф12 А500С | т |  |
| Арматура ф16 А500С | т |  |
| Арматура ф20 А500С | т |  |
| Проволока 5 Вр1 | т |  |
| Праймер Технониколь 1 | л |  |
| Праймер Технониколь 24 | кг |  |

## Schedule

| ID | WBS | Task | Type | Duration | Start | Finish | Predecessors | Complete | Remaining | Baseline start | Baseline finish | Baseline duration | Total slack | Constraint | Work | Actual work | Text9 | Text10 | Text11 |
| --- | --- | --- | --- | --- | --- | --- | --- | --- | --- | --- | --- | --- | --- | --- | --- | --- | --- | --- | --- |
| 1 | 1 | **Исходно-разрешительная документация** |  | 187.75d | 2023-12-04 A | 2024-06-14 |  | 66% | 64.67d | 2023-12-04 | 2024-06-07 | 181d | 0d | start no earlier than 2023-12-04 | 592h | 173.78h | п. 1.1.1. | Ф1-СВ | ГП |
| 2 | 1.1 | **Инженерные изыскания** |  | 125d | 2024-02-02 A | 2024-06-11 |  | 43% | 70.89d | 2023-12-04 | 2023-12-04 | 0d | 4.25d | start no earlier than 2023-12-04 | 592h | 173.78h | п. 1.1.1. | Ф1-СВ | ГП |
| 3 | 1.1.1 | ИГИ |  | 12.5d | 2024-03-28 A | 2024-04-10 |  | 12% | 11d | 2023-12-04 | 2023-12-04 | 0d | 63.25d | start no earlier than 2023-12-04 | 343h | 41.16h | п. 1.1.1. | Ф1-СВ | ГП |
| 4 | 1.1.2 | ИГДИ |  | 125d | 2024-02-02 A | 2024-06-11 |  | 44% | 70d | 2023-12-04 | 2023-12-04 | 0d | 4.25d | start no earlier than 2023-12-04 | 100h | 44h | п. 1.1.1. | Ф1-СВ | ГП |
| 5 | 1.1.3 | ИГМИ |  | 6.25d | 2024-03-29 A | 2024-04-05 |  | 3% | 6.06d | 2023-12-04 | 2023-12-04 | 0d | 68.19d | start no earlier than 2023-12-04 | 50h | 1.5h | п. 1.1.1. | Ф1-СВ | ГП |
| 6 | 1.1.4 | ИЭИ |  | 12.38d | 2024-03-19 A | 2024-04-01 |  | 88% | 1.49d | 2023-12-04 | 2023-12-04 | 0d | 72.77d | start no earlier than 2023-12-04 | 99h | 87.12h | п. 1.1.1. | Ф1-СВ | ГП |
| 7 | 1.2 | **Технические условия** |  | 30.25d | 2023-12-04 A | 2024-01-09 A |  | 100% |  | 2023-12-04 | 2024-01-09 | 30.25d |  | start no earlier than 2023-12-04 |  |  | п. 1.1.1. | Ф1-СВ | ГП |
| 8 | 1.2.1 | Присоединение к уличной сети на период эксплуатации (постоянная дорога) | milestone | 0d | 2024-01-09 A | 2024-01-09 A |  | 100% |  | 2024-01-09 | 2024-01-09 | 0d |  | start no earlier than 2024-01-09 |  |  | п. 1.1.1. | Ф1-СВ | ГП |
| 9 | 1.2.2 | Присоединение к уличной сети на период строительства (временная дорога) | milestone | 0d | 2024-01-09 A | 2024-01-09 A |  | 100% |  | 2024-01-09 | 2024-01-09 | 0d |  | start no earlier than 2024-01-09 |  |  | п. 1.1.1. | Ф1-СВ | ГП |
| 10 | 1.2.3 | Электроснабжение (постоянное) | milestone | 0d | 2023-12-04 A | 2023-12-04 A |  | 100% |  | 2023-12-04 | 2023-12-04 | 0d |  | start no earlier than 2023-12-04 |  |  | п. 1.1.1. | Ф1-СВ | ГП |
| 11 | 1.2.4 | Электроснабжение (временное) | milestone | 0d | 2023-12-04 A | 2023-12-04 A |  | 100% |  | 2023-12-04 | 2023-12-04 | 0d |  | start no earlier than 2023-12-04 |  |  | п. 1.1.1. | Ф1-СВ | ГП |
| 12 | 1.2.5 | Теплоснабжение | milestone | 0d | 2024-01-09 A | 2024-01-09 A |  | 100% |  | 2024-01-09 | 2024-01-09 | 0d |  | start no earlier than 2024-01-09 |  |  | п. 1.1.1. | Ф1-СВ | ГП |
| 13 | 1.2.6 | Водоснабжение и водоотведение | milestone | 0d | 2024-01-09 A | 2024-01-09 A |  | 100% |  | 2024-01-09 | 2024-01-09 | 0d |  | start no earlier than 2024-01-09 |  |  | п. 1.1.1. | Ф1-СВ | ГП |
| 14 | 1.2.7 | Дождевая канализация | milestone | 0d | 2024-01-09 A | 2024-01-09 A |  | 100% |  | 2024-01-09 | 2024-01-09 | 0d |  | start no earlier than 2024-01-09 |  |  | п. 1.1.1. | Ф1-СВ | ГП |
| 15 | 1.2.8 | Сети связи | milestone | 0d | 2024-01-09 A | 2024-01-09 A |  | 100% |  | 2024-01-09 | 2024-01-09 | 0d |  | start no earlier than 2024-01-09 |  |  | п. 1.1.1. | Ф1-СВ | ГП |
| 16 | 1.2.9 | МЧС (при необходимости) | milestone | 0d | 2024-01-09 A | 2024-01-09 A |  | 100% |  | 2024-01-09 | 2024-01-09 | 0d |  | start no earlier than 2024-01-09 |  |  | п. 1.1.1. | Ф1-СВ | ГП |
| 17 | 1.2.10 | Диспетчеризация лифтов | milestone | 0d | 2024-01-09 A | 2024-01-09 A |  | 100% |  | 2024-01-09 | 2024-01-09 | 0d |  | start no earlier than 2024-01-09 |  |  | п. 1.1.1. | Ф1-СВ | ГП |
| 18 | 1.2.11 | ГО и ЧС (речевое оповещение) | milestone | 0d | 2024-01-09 A | 2024-01-09 A |  | 100% |  | 2024-01-09 | 2024-01-09 | 0d |  | start no earlier than 2024-01-09 |  |  | п. 1.1.1. | Ф1-СВ | ГП |
| 19 | 1.3 | **Проектные работы (объем стадии П)** |  | 46.12d | 2023-12-11 A | 2024-01-27 A |  | 100% |  | 2023-12-11 | 2024-01-27 | 46.12d |  | start no earlier than 2023-12-11 |  |  |  |  | ГП |
| 20 | 1.3.1 | Разработка ПЗ |  | 18ed | 2023-12-11 A | 2023-12-29 A |  | 100% |  | 2023-12-11 | 2023-12-29 | 18ed |  | start no earlier than 2023-12-11 |  |  | п. 1.1.1. | Ф1-СВ | ГП |
| 21 | 1.3.2 | Разработка АР (только планировки) |  | 18ed | 2023-12-11 A | 2023-12-29 A |  | 100% |  | 2023-12-11 | 2023-12-29 | 18ed |  | start no earlier than 2023-12-11 |  |  | п. 1.1.1. | Ф1-СВ | ГП |
| 22 | 1.3.3 | Разработка АР (итог) |  | 18ed | 2023-12-11 A | 2023-12-29 A |  | 100% |  | 2023-12-11 | 2023-12-29 | 18ed |  | start no earlier than 2023-12-11 |  |  | п. 1.1.1. | Ф1-СВ | ГП |
| 23 | 1.3.4 | Разработка ОДИ |  | 18ed | 2023-12-11 A | 2023-12-29 A |  | 100% |  | 2023-12-11 | 2023-12-29 | 18ed |  | start no earlier than 2023-12-11 |  |  | п. 1.1.3. | Ф1-СВ | ГП |
| 24 | 1.3.5 | Разработка КР |  | 14.24ed | 2023-12-11 A | 2023-12-25 A |  | 100% |  | 2023-12-11 | 2023-12-25 | 14.24ed |  | start no earlier than 2023-12-11 |  |  | п. 1.1.1. | Ф1-СВ | ГП |
| 25 | 1.3.6 | Разработка ПЗУ |  | 12.94ed | 2023-12-11 A | 2023-12-24 A |  | 100% |  | 2023-12-11 | 2023-12-24 | 12.94ed |  | start no earlier than 2023-12-11 |  |  | п. 1.1.1. | Ф1-СВ | ГП |
| 26 | 1.3.7 | Разработка ПОС |  | 12.94ed | 2023-12-11 A | 2023-12-24 A |  | 100% |  | 2023-12-11 | 2023-12-24 | 12.94ed |  | start no earlier than 2023-12-11 |  |  | п. 1.1.1. | Ф1-СВ | ГП |
| 27 | 1.3.8 | Разработка ПБ |  | 18ed | 2024-01-09 A | 2024-01-27 A |  | 100% |  | 2024-01-09 | 2024-01-27 | 18ed |  | start no earlier than 2024-01-09 |  |  | п. 1.1.1. | Ф1-СВ | ГП |
| 28 | 1.3.9 | Разработка ООС |  | 18ed | 2023-12-11 A | 2023-12-29 A |  | 100% |  | 2023-12-11 | 2023-12-29 | 18ed |  | start no earlier than 2023-12-11 |  |  | п. 1.1.1. | Ф1-СВ | ГП |
| 29 | 1.3.10 | Выдача задания смежникам |  | 18ed | 2023-12-11 A | 2023-12-29 A |  | 100% |  | 2023-12-11 | 2023-12-29 | 18ed |  | start no earlier than 2023-12-11 |  |  | п. 1.1.1. | Ф1-СВ | ГП |
| 30 | 1.3.11 | Разработка разделов ЭМ, ЭО |  | 18ed | 2023-12-11 A | 2023-12-29 A |  | 100% |  | 2023-12-11 | 2023-12-29 | 18ed |  | start no earlier than 2023-12-11 |  |  |  |  | СЗ |
| 31 | 1.3.12 | Разработка раздела СС |  | 18ed | 2023-12-11 A | 2023-12-29 A |  | 100% |  | 2023-12-11 | 2023-12-29 | 18ed |  | start no earlier than 2023-12-11 |  |  |  |  | СЗ |
| 32 | 1.3.13 | Разработка СОУЭ, АПС |  | 18ed | 2023-12-11 A | 2023-12-29 A |  | 100% |  | 2023-12-11 | 2023-12-29 | 18ed |  | start no earlier than 2023-12-11 |  |  | п. 1.1.2. | Ф1-СВ | ГП |
| 33 | 1.3.14 | Разработка ВК |  | 18ed | 2023-12-11 A | 2023-12-29 A |  | 100% |  | 2023-12-11 | 2023-12-29 | 18ed |  | start no earlier than 2023-12-11 |  |  | п. 1.1.2. | Ф1-СВ | ГП |
| 34 | 1.3.15 | Разработка ОВ |  | 18ed | 2023-12-11 A | 2023-12-29 A |  | 100% |  | 2023-12-11 | 2023-12-29 | 18ed |  | start no earlier than 2023-12-11 |  |  |  |  | СЗ |
| 35 | 1.3.16 | Разработка ТМ |  | 18ed | 2023-12-11 A | 2023-12-29 A |  | 100% |  | 2023-12-11 | 2023-12-29 | 18ed |  | start no earlier than 2023-12-11 |  |  |  |  | СЗ |
| 36 | 1.3.17 | Разработка ТХ |  | 18ed | 2023-12-11 A | 2023-12-29 A |  | 100% |  | 2023-12-11 | 2023-12-29 | 18ed |  | start no earlier than 2023-12-11 |  |  | п. 1.1.3. | Ф1-СВ | ГП |
| 37 | 1.3.18 | Разработка ТБЭ |  | 18ed | 2023-12-11 A | 2023-12-29 A |  | 100% |  | 2023-12-11 | 2023-12-29 | 18ed |  | start no earlier than 2023-12-11 |  |  | п. 1.1.3. | Ф1-СВ | ГП |
| 38 | 1.3.19 | ПИР Наружные сети |  | 26d | 2023-12-11 A | 2024-01-06 A |  | 100% |  | 2023-12-11 | 2024-01-06 | 26d |  | start no earlier than 2023-12-11 |  |  |  |  | СЗ |
| 39 | 1.4 | Сбор документов для технической части |  | 5d | 2024-01-27 A | 2024-02-01 A | 19 | 100% |  | 2024-01-27 | 2024-02-01 | 5d |  | start no earlier than 2024-01-02 |  |  | п. 1.1.3. | Ф1-СВ | ГП |
| 40 | 1.5 | Экспертиза технической части проекта |  | 50d | 2023-12-16 A | 2024-04-04 | 39 | 90% | 5d | 2023-12-16 | 2024-03-28 | 50d | 69.25d | start no earlier than 2024-01-02 |  |  | п. 1.1.3. | Ф1-СВ | ГП |
| 41 | 1.6 | Конъюнктурный анализ цен материалов |  | 83ed | 2024-01-27 A | 2024-04-19 | 19 | 11% | 74ed | 2024-01-27 | 2024-04-12 | 76ed | 0d | start no earlier than 2024-01-27 |  |  | п. 1.1.3. | Ф1-СВ | ГП |
| 42 | 1.7 | Разработка Сметы |  | 109ed | 2024-02-26 A | 2024-06-14 | 41 | 13% | 95ed | 2024-02-26 | 2024-06-07 | 102ed | 0d | start no earlier than 2024-02-26 |  |  | п. 1.1.3. | Ф1-СВ | ГП |
